# ЛР №1

Schedule from MS Project, 2024-03-01 to 2024-09-24, costs in ₽.
Команда разработчиков из 16 человек занимается созданием карты города на основе собственного модуля отображения. Проект должен быть завершен в течение 6 месяцев. Бюджет проекта: 50 000 рублей.

## Calendars

- Стандартный: Mon-Fri 09:00-13:00, 14:00-18:00; Sat-Sun off. Exceptions (off unless hours are given): 2024-03-08 (Международный женский день, recurring), 2024-04-28 to 2024-05-01 (Праздник Весны и Труда), 2024-05-09 to 2024-05-12 (День Победы), 2024-06-12 (День России).

## Resources

| Resource | Group | Rate | Cost per use |
| --- | --- | --- | --- |
| Ведущий программист | Программирование | 10 | 100 |
| Программист#1 | Программирование | 7 | 50 |
| Программист#2 | Программирование | 7 | 50 |
| Программист#3 | Программирование | 7 | 50 |
| Программист#4 | Программирование | 7 | 50 |
| Системный аналитик | Анализ | 20 | 300 |
| Художник-дизайнер | Дизайн | 8 | 70 |
| Технический писатель | Документация | 5 | 20 |
| Web-дизайнер | Internet | 7 | 50 |
| 3D аниматор | Дизайн | 8 | 70 |
| Мультимедиа-корреспондент | М-медия | 3 | 20 |
| Наборщик данных #1 | Ввод данных | 2 | 10 |
| Наборщик данных #2 | Ввод данных | 2 | 10 |
| Наборщик данных #3 | Ввод данных | 2 | 10 |
| Наборщик данных #4 | Ввод данных | 2 | 10 |
| Наборщик данных #5 | Ввод данных | 2 | 10 |
| Дополнительный сервер |  | 2 |  |

## Schedule

| ID | WBS | Task | Type | Duration | Start | Finish | Predecessors | Total slack | Free slack | Resources | Work | Cost |
| --- | --- | --- | --- | --- | --- | --- | --- | --- | --- | --- | --- | --- |
| 1 | 1 | Начало проекта | milestone | 0d | 2024-03-01 09:00 | 2024-03-01 09:00 |  | 70.23d | 0d |  |  |  |
| 2 | 2 | **Создание интерфейса** |  | 110.32d | 2024-03-01 09:00 | 2024-08-13 11:34 | 1 | 0d |  |  | 560h | 5,550 |
| 3 | 2.1 | **Разработка дизайна интерфейса** |  | 25.09d | 2024-03-01 09:00 | 2024-04-08 09:43 |  | 70.23d | 0d |  | 320h | 2,770 |
| 4 | 2.1.1 | Разработка 2D графических элементов |  | 3w | 2024-03-01 09:00 | 2024-03-25 09:25 |  | 70.23d | 0d | Художник-дизайнер | 120h | 1,030 |
| 5 | 2.1.2 | Разработка 3D графических элементов |  | 2w | 2024-03-01 09:00 | 2024-03-18 09:17 | 4SS | 70.23d | 0d | 3D аниматор | 80h | 710 |
| 6 | 2.1.3 | Создание заставки |  | 3w | 2024-03-18 09:17 | 2024-04-08 09:43 | 5 | 70.23d | 70d | 3D аниматор | 120h | 1,030 |
| 7 | 2.2 | Программирование интерфейса |  | 3w | 2024-07-23 11:34 | 2024-08-13 11:34 | 3, 12 | 0d |  | Программист#3; Программист#4 | 240h | 1,780 |
| 8 | 3 | **Построение базы объектов** |  | 85.04d | 2024-03-25 09:25 | 2024-07-30 09:43 |  | 40.39d |  | Дополнительный сервер | 5768.29h | 15,626.57 |
| 9 | 3.1 | Анализ и построение структуры базы объектов |  | 2w | 2024-03-25 09:25 | 2024-04-08 09:43 |  | 40.39d | 0d | Системный аналитик | 80h | 1,900 |
| 10 | 3.2 | Программирование средств обработки базы объектов |  | 3w | 2024-04-08 09:43 | 2024-05-02 09:43 | 9 | 40.39d | 0d | Программист#3; Программист#4 | 240h | 1,780 |
| 11 | 3.3 | Наполнение базы объектов |  | 12w | 2024-05-02 09:43 | 2024-07-30 09:43 | 10 | 40.39d |  | Наборщик данных #1; Наборщик данных #2; Наборщик данных #3; Наборщик данных #4; Наборщик данных #5 | 2400h | 4,850 |
| 12 | 4 | **Создание ядра GIS** |  | 95.32d | 2024-03-01 09:00 | 2024-07-23 11:34 |  | 0d |  |  | 1880h | 18,679.99 |
| 13 | 4.1 | Анализ и проектирование ядра |  | 3w | 2024-03-01 09:00 | 2024-03-25 09:25 |  | 0d |  | Ведущий программист; Системный аналитик | 240h | 4,000 |
| 14 | 4.2 | Создание модели ядра |  | 5.02w | 2024-03-25 09:25 | 2024-05-02 10:08 | 13 | 0d |  | Ведущий программист; Программист#1 | 400h | 3,550 |
| 15 | 4.3 | Тестирование модели ядра |  | 1w | 2024-05-02 10:08 | 2024-05-13 10:08 | 14 | 0d |  | Программист#1 | 40h | 330 |
| 16 | 4.4 | Создание рабочей версии ядра |  | 10.04w | 2024-05-13 10:08 | 2024-07-23 11:34 | 15 | 0d |  | Ведущий программист; Программист#1; Программист#2 | 1200h | 9,799.99 |
| 17 | 5 | Создание мультимедиа – наполнения |  | 6w | 2024-04-08 09:43 | 2024-05-27 10:43 | 3 | 85.27d | 83d | Мультимедиа-корреспондент | 240h | 740 |
| 18 | 6 | Создание справочной системы |  | 2w | 2024-08-22 12:00 | 2024-09-05 12:17 | 7 | 13.07d | 18d | Технический писатель | 80h | 420 |
| 19 | 7 | **Создание руководства пользователя** |  | 17.05d | 2024-07-30 11:34 | 2024-08-22 12:00 | 7FS-10d | 0d |  |  | 160h | 1,010 |
| 20 | 7.1 | Разработка дизайна руководства |  | 1w | 2024-07-30 11:34 | 2024-08-06 11:43 |  | 0d |  | Художник-дизайнер | 40h | 390 |
| 21 | 7.2 | Написание руководства пользователя |  | 3w | 2024-08-01 11:34 | 2024-08-22 12:00 | 20SS+2d | 0d |  | Технический писатель | 120h | 620 |
| 22 | 8 | **Создание web – сайта и поддержка** |  | 23.09d | 2024-08-01 11:34 | 2024-09-03 12:17 |  | 0d |  |  | 248h | 2,106 |
| 23 | 8.1 | Разработка структуры сайта |  | 1d | 2024-08-01 11:34 | 2024-08-02 11:34 | 21SS | 0d |  | Web-дизайнер | 8h | 106 |
| 24 | 8.2 | Разработка дизайна сайта |  | 1.4w | 2024-08-02 11:34 | 2024-08-13 11:51 | 23 | 0d |  | 3D аниматор; Web-дизайнер; Художник-дизайнер | 120h | 1,110 |
| 25 | 8.3 | Наполнение сайта |  | 3w | 2024-08-13 11:51 | 2024-09-03 12:17 | 24 | 0d |  | Web-дизайнер | 120h | 890 |
| 26 | 9 | Тестирование сайта |  | 4.01w | 2024-08-27 12:17 | 2024-09-24 12:52 | 22FS-1w | 0d |  | Ведущий программист; Программист#1; Программист#2 | 480h | 4,040 |
| 27 | 10 | Сдача сайта в эксплуатацию | milestone | 0w | 2024-09-24 12:52 | 2024-09-24 12:52 | 26 | 0d |  |  |  |  |

| ID | WBS | Task | Duration | Start | Finish | Total slack | Free slack | Constraint | Resources | Work | Cost |
| --- | --- | --- | --- | --- | --- | --- | --- | --- | --- | --- | --- |
| 28 | 11 | **Еженедельное совещание** | 133.02d | 2024-03-06 09:00 | 2024-09-18 09:08 | 4.47d | 1.98d |  |  | 29h | 1,311.21 |
| 29 | 11.1 | Еженедельное совещание 1 | 0.14h | 2024-03-06 09:00 | 2024-03-06 09:08 | 137.47d | 134.98d | start no earlier than 2024-03-06 09:00 | 3D аниматор; Web-дизайнер; Ведущий программист; Мультимедиа-корреспондент; Системный аналитик; Технический писатель; Художник-дизайнер | 1h | 45.21 |
| 30 | 11.2 | Еженедельное совещание 2 | 0.14h | 2024-03-13 09:00 | 2024-03-13 09:08 | 133.47d | 130.98d | start no earlier than 2024-03-13 09:00 | 3D аниматор; Web-дизайнер; Ведущий программист; Мультимедиа-корреспондент; Системный аналитик; Технический писатель; Художник-дизайнер | 1h | 45.21 |
| 31 | 11.3 | Еженедельное совещание 3 | 0.14h | 2024-03-20 09:00 | 2024-03-20 09:08 | 128.47d | 125.98d | start no earlier than 2024-03-20 09:00 | 3D аниматор; Web-дизайнер; Ведущий программист; Мультимедиа-корреспондент; Системный аналитик; Технический писатель; Художник-дизайнер | 1h | 45.21 |
| 32 | 11.4 | Еженедельное совещание 4 | 0.14h | 2024-03-27 09:00 | 2024-03-27 09:08 | 123.47d | 120.98d | start no earlier than 2024-03-27 09:00 | 3D аниматор; Web-дизайнер; Ведущий программист; Мультимедиа-корреспондент; Системный аналитик; Технический писатель; Художник-дизайнер | 1h | 45.21 |
| 33 | 11.5 | Еженедельное совещание 5 | 0.14h | 2024-04-03 09:00 | 2024-04-03 09:08 | 118.47d | 115.98d | start no earlier than 2024-04-03 09:00 | 3D аниматор; Web-дизайнер; Ведущий программист; Мультимедиа-корреспондент; Системный аналитик; Технический писатель; Художник-дизайнер | 1h | 45.21 |
| 34 | 11.6 | Еженедельное совещание 6 | 0.14h | 2024-04-10 09:00 | 2024-04-10 09:08 | 113.47d | 110.98d | start no earlier than 2024-04-10 09:00 | 3D аниматор; Web-дизайнер; Ведущий программист; Мультимедиа-корреспондент; Системный аналитик; Технический писатель; Художник-дизайнер | 1h | 45.21 |
| 35 | 11.7 | Еженедельное совещание 7 | 0.14h | 2024-04-17 09:00 | 2024-04-17 09:08 | 108.47d | 105.98d | start no earlier than 2024-04-17 09:00 | 3D аниматор; Web-дизайнер; Ведущий программист; Мультимедиа-корреспондент; Системный аналитик; Технический писатель; Художник-дизайнер | 1h | 45.21 |
| 36 | 11.8 | Еженедельное совещание 8 | 0.14h | 2024-04-24 09:00 | 2024-04-24 09:08 | 103.47d | 100.98d | start no earlier than 2024-04-24 09:00 | 3D аниматор; Web-дизайнер; Ведущий программист; Мультимедиа-корреспондент; Системный аналитик; Технический писатель; Художник-дизайнер | 1h | 45.21 |
| 37 | 11.9 | Еженедельное совещание 9 | 0.14h | 2024-05-02 09:00 | 2024-05-02 09:08 | 100.47d | 97.98d | start no earlier than 2024-05-01 09:00 | 3D аниматор; Web-дизайнер; Ведущий программист; Мультимедиа-корреспондент; Системный аналитик; Технический писатель; Художник-дизайнер | 1h | 45.21 |
| 38 | 11.10 | Еженедельное совещание 10 | 0.14h | 2024-05-08 09:00 | 2024-05-08 09:08 | 96.47d | 93.98d | start no earlier than 2024-05-08 09:00 | 3D аниматор; Web-дизайнер; Ведущий программист; Мультимедиа-корреспондент; Системный аналитик; Технический писатель; Художник-дизайнер | 1h | 45.21 |
| 39 | 11.11 | Еженедельное совещание 11 | 0.14h | 2024-05-15 09:00 | 2024-05-15 09:08 | 93.47d | 90.98d | start no earlier than 2024-05-15 09:00 | 3D аниматор; Web-дизайнер; Ведущий программист; Мультимедиа-корреспондент; Системный аналитик; Технический писатель; Художник-дизайнер | 1h | 45.21 |
| 40 | 11.12 | Еженедельное совещание 12 | 0.14h | 2024-05-22 09:00 | 2024-05-22 09:08 | 88.47d | 85.98d | start no earlier than 2024-05-22 09:00 | 3D аниматор; Web-дизайнер; Ведущий программист; Мультимедиа-корреспондент; Системный аналитик; Технический писатель; Художник-дизайнер | 1h | 45.21 |
| 41 | 11.13 | Еженедельное совещание 13 | 0.14h | 2024-05-29 09:00 | 2024-05-29 09:08 | 83.47d | 80.98d | start no earlier than 2024-05-29 09:00 | 3D аниматор; Web-дизайнер; Ведущий программист; Мультимедиа-корреспондент; Системный аналитик; Технический писатель; Художник-дизайнер | 1h | 45.21 |
| 42 | 11.14 | Еженедельное совещание 14 | 0.14h | 2024-06-05 09:00 | 2024-06-05 09:08 | 78.47d | 75.98d | start no earlier than 2024-06-05 09:00 | 3D аниматор; Web-дизайнер; Ведущий программист; Мультимедиа-корреспондент; Системный аналитик; Технический писатель; Художник-дизайнер | 1h | 45.21 |
| 43 | 11.15 | Еженедельное совещание 15 | 0.14h | 2024-06-13 09:00 | 2024-06-13 09:08 | 73.47d | 70.98d | start no earlier than 2024-06-12 09:00 | 3D аниматор; Web-дизайнер; Ведущий программист; Мультимедиа-корреспондент; Системный аналитик; Технический писатель; Художник-дизайнер | 1h | 45.21 |
| 44 | 11.16 | Еженедельное совещание 16 | 0.14h | 2024-06-19 09:00 | 2024-06-19 09:08 | 69.47d | 66.98d | start no earlier than 2024-06-19 09:00 | 3D аниматор; Web-дизайнер; Ведущий программист; Мультимедиа-корреспондент; Системный аналитик; Технический писатель; Художник-дизайнер | 1h | 45.21 |
| 45 | 11.17 | Еженедельное совещание 17 | 0.14h | 2024-06-26 09:00 | 2024-06-26 09:08 | 64.47d | 61.98d | start no earlier than 2024-06-26 09:00 | 3D аниматор; Web-дизайнер; Ведущий программист; Мультимедиа-корреспондент; Системный аналитик; Технический писатель; Художник-дизайнер | 1h | 45.21 |
| 46 | 11.18 | Еженедельное совещание 18 | 0.14h | 2024-07-03 09:00 | 2024-07-03 09:08 | 59.47d | 56.98d | start no earlier than 2024-07-03 09:00 | 3D аниматор; Web-дизайнер; Ведущий программист; Мультимедиа-корреспондент; Системный аналитик; Технический писатель; Художник-дизайнер | 1h | 45.21 |
| 47 | 11.19 | Еженедельное совещание 19 | 0.14h | 2024-07-10 09:00 | 2024-07-10 09:08 | 54.47d | 51.98d | start no earlier than 2024-07-10 09:00 | 3D аниматор; Web-дизайнер; Ведущий программист; Мультимедиа-корреспондент; Системный аналитик; Технический писатель; Художник-дизайнер | 1h | 45.21 |
| 48 | 11.20 | Еженедельное совещание 20 | 0.14h | 2024-07-17 09:00 | 2024-07-17 09:08 | 49.47d | 46.98d | start no earlier than 2024-07-17 09:00 | 3D аниматор; Web-дизайнер; Ведущий программист; Мультимедиа-корреспондент; Системный аналитик; Технический писатель; Художник-дизайнер | 1h | 45.21 |
| 49 | 11.21 | Еженедельное совещание 21 | 0.14h | 2024-07-24 09:00 | 2024-07-24 09:08 | 44.47d | 41.98d | start no earlier than 2024-07-24 09:00 | 3D аниматор; Web-дизайнер; Ведущий программист; Мультимедиа-корреспондент; Системный аналитик; Технический писатель; Художник-дизайнер | 1h | 45.21 |
| 50 | 11.22 | Еженедельное совещание 22 | 0.14h | 2024-07-31 09:00 | 2024-07-31 09:08 | 39.47d | 36.98d | start no earlier than 2024-07-31 09:00 | 3D аниматор; Web-дизайнер; Ведущий программист; Мультимедиа-корреспондент; Системный аналитик; Технический писатель; Художник-дизайнер | 1h | 45.21 |
| 51 | 11.23 | Еженедельное совещание 23 | 0.14h | 2024-08-07 09:00 | 2024-08-07 09:08 | 34.47d | 31.98d | start no earlier than 2024-08-07 09:00 | 3D аниматор; Web-дизайнер; Ведущий программист; Мультимедиа-корреспондент; Системный аналитик; Технический писатель; Художник-дизайнер | 1h | 45.21 |
| 52 | 11.24 | Еженедельное совещание 24 | 0.14h | 2024-08-14 09:00 | 2024-08-14 09:08 | 29.47d | 26.98d | start no earlier than 2024-08-14 09:00 | 3D аниматор; Web-дизайнер; Ведущий программист; Мультимедиа-корреспондент; Системный аналитик; Технический писатель; Художник-дизайнер | 1h | 45.21 |
| 53 | 11.25 | Еженедельное совещание 25 | 0.14h | 2024-08-21 09:00 | 2024-08-21 09:08 | 24.47d | 21.98d | start no earlier than 2024-08-21 09:00 | 3D аниматор; Web-дизайнер; Ведущий программист; Мультимедиа-корреспондент; Системный аналитик; Технический писатель; Художник-дизайнер | 1h | 45.21 |
| 54 | 11.26 | Еженедельное совещание 26 | 0.14h | 2024-08-28 09:00 | 2024-08-28 09:08 | 19.47d | 16.98d | start no earlier than 2024-08-28 09:00 | 3D аниматор; Web-дизайнер; Ведущий программист; Мультимедиа-корреспондент; Системный аналитик; Технический писатель; Художник-дизайнер | 1h | 45.21 |
| 55 | 11.27 | Еженедельное совещание 27 | 0.14h | 2024-09-04 09:00 | 2024-09-04 09:08 | 14.47d | 11.98d | start no earlier than 2024-09-04 09:00 | 3D аниматор; Web-дизайнер; Ведущий программист; Мультимедиа-корреспондент; Системный аналитик; Технический писатель; Художник-дизайнер | 1h | 45.21 |
| 56 | 11.28 | Еженедельное совещание 28 | 0.14h | 2024-09-11 09:00 | 2024-09-11 09:08 | 9.47d | 6.98d | start no earlier than 2024-09-11 09:00 | 3D аниматор; Web-дизайнер; Ведущий программист; Мультимедиа-корреспондент; Системный аналитик; Технический писатель; Художник-дизайнер | 1h | 45.21 |
| 57 | 11.29 | Еженедельное совещание 29 | 0.14h | 2024-09-18 09:00 | 2024-09-18 09:08 | 4.47d | 1.98d | start no earlier than 2024-09-18 09:00 | 3D аниматор; Web-дизайнер; Ведущий программист; Мультимедиа-корреспондент; Системный аналитик; Технический писатель; Художник-дизайнер | 1h | 45.21 |
